Schedule from MS Project, 2017-12-30 to 2018-09-27.
Microsoft

## Calendars

- 标准: Mon-Fri 08:00-12:00, 13:00-17:00; Sat-Sun off.

## Schedule

| ID | WBS | Task | Type | Duration | Start | Finish | Predecessors | Total slack | Free slack | Constraint |
| --- | --- | --- | --- | --- | --- | --- | --- | --- | --- | --- |
| 1 | 1 | 合同签订 | manual | 1d | 2017-12-30 | 2018-01-01 |  |  |  |  |
| 2 | 2 | **一期（省本级应用）** |  | 74d | 2018-01-01 | 2018-04-12 | 1 |  |  |  |
| 3 | 2.1 | 基础数据收集整理 |  | 15d | 2018-01-01 | 2018-01-22 | 1 | 0d |  |  |
| 4 | 2.2 | 数据库及业务程序安装部署 |  | 7d | 2018-01-22 | 2018-01-31 | 3 | 0d |  |  |
| 5 | 2.3 | 现场环境业务功能测试 |  | 2d | 2018-01-31 | 2018-02-02 | 4 | 0d |  |  |
| 6 | 2.4 | 业务流程、人员权限配置 |  | 2d | 2018-02-02 | 2018-02-06 | 5 | 0d |  |  |
| 7 | 2.5 | 部分部门应用 |  | 10d | 2018-02-06 | 2018-02-20 | 6 | 37.88d |  |  |
| 8 | 2.6 | 使用过程需求收集 |  | 10d | 2018-02-06 | 2018-02-20 | 6 | 0d |  |  |
| 9 | 2.7 | 本地化程序调整 |  | 10d? | 2018-02-20 | 2018-03-06 | 8 | 27.88d |  |  |
| 10 | 2.8 | 全院统一培训 |  | 2d? | 2018-02-20 | 2018-02-22 | 8 | 0d |  |  |
| 11 | 2.9 | 分部门进行操作指导 |  | 5d | 2018-02-22 | 2018-03-01 | 10 | 0d |  |  |
| 12 | 3 | 省级部门使用 |  | 30d? | 2018-03-01 | 2018-04-12 | 11 | 0d |  |  |
| 13 | 4 | 一期（中基层推广） |  | 6mo | 2018-04-12 | 2018-09-27 | 12 | 0d |  | start no earlier than 2010-04-04 |
| 14 | 5 | **两庭建设** |  | 100d | 2018-01-01 | 2018-05-21 | 1 |  |  |  |
| 15 | 5.1 | 需求收集 |  | 1mo | 2018-01-01 | 2018-01-29 |  | 0.12d | 0d |  |
| 16 | 5.2 | 软件研发 |  | 2mo | 2018-01-29 | 2018-03-26 | 15 | 0.12d | 0d |  |
| 17 | 5.3 | 测试部署 |  | 2w | 2018-03-26 | 2018-04-09 | 16 | 0.12d | 0d |  |
| 18 | 5.4 | 全省推广 |  | 1.49mo | 2018-04-09 | 2018-05-18 | 17 | 0.12d |  |  |
